# Product Management for Theremizer

How a schedule from MS Project changed from version to version. A marks actual dates.

## Version 1 (saved 2019-11-06)

Note of the change: Project file for Theremizer and examples

| ID | WBS | Task | Duration | Start | Finish | Predecessors | Total float | Constraint |
| --- | --- | --- | --- | --- | --- | --- | --- | --- |
| 1 | 1 | **Prototyping Hardware & Processor** | 8d | 2019-11-06 | 2019-11-15 |  | 0d |  |
| 2 | 1.1 | **Finalize Sound Generator** | 7d | 2019-11-06 | 2019-11-14 |  | 0d |  |
| 3 |  | Move breadboard prototype to protoboard | 5d | 2019-11-06 | 2019-11-12 |  |  |  |
| 4 |  | Test functionality | 2d | 2019-11-13 | 2019-11-14 | 3 | 1d |  |
| 5 |  | Protoboard functional | 0d | 2019-11-14 | 2019-11-14 | 4 | 1d |  |
| 6 | 1.2 | **Finalize filter design** | 4d | 2019-11-06 | 2019-11-11 |  | 4d |  |
| 7 |  | Select trim resistor values | 2d | 2019-11-06 | 2019-11-07 |  | 4d |  |
| 8 |  | Test with Sound Generator | 2d | 2019-11-08 | 2019-11-11 | 7 | 4d |  |
| 9 |  | Filters and embiggens signal correctly | 0d | 2019-11-11 | 2019-11-11 | 8 | 4d |  |
| 10 | 1.3 | **Implement Processor CV Generation** | 8d | 2019-11-06 | 2019-11-15 |  | 0d |  |
| 11 |  | Research ADC reading and PWM output | 2d | 2019-11-06 | 2019-11-07 |  | 0d |  |
| 12 |  | Write code | 4d | 2019-11-08 | 2019-11-13 | 11 | 0d |  |
| 13 |  | Test code and rewrite if necessary | 2d | 2019-11-14 | 2019-11-15 | 12 | 0d |  |
| 14 |  | Processor outputs control voltage in desired range | 0d | 2019-11-15 | 2019-11-15 | 13 | 0d |  |
| 15 | 2 | **Finalize Schematic** | 2d | 2019-11-18 | 2019-11-19 | 1 | 0d |  |
| 16 |  | Add changes | 1d | 2019-11-18 | 2019-11-18 | 2, 6 | 0d |  |
| 17 |  | Pass ERC | 0d | 2019-11-18 | 2019-11-18 | 16 | 0d |  |
| 18 |  | Review with team | 1d | 2019-11-19 | 2019-11-19 | 17 | 0d |  |
| 19 |  | Team agrees schematic is finalized | 0d | 2019-11-19 | 2019-11-19 | 18 | 0d |  |
| 20 | 3 | **Finalize PCB Layout** | 3d | 2019-11-20 | 2019-11-22 | 15 | 0d |  |
| 21 |  | Layout after schematic finalized | 2d | 2019-11-20 | 2019-11-21 | 15 | 0d |  |
| 22 |  | Pass DRC | 0d | 2019-11-21 | 2019-11-21 | 21 | 0d |  |
| 23 |  | Review with team | 1d | 2019-11-22 | 2019-11-22 | 22 | 0d |  |
| 24 |  | Team agrees layout is finalized | 0d | 2019-11-22 | 2019-11-22 | 23 | 0d |  |
| 25 | 4 | **Order & Receive Parts/PCB** | 8d | 2019-11-25 | 2019-12-04 | 20 | 0d |  |
| 26 |  | Create BOM from EAGLE | 1d | 2019-11-25 | 2019-11-25 | 20 | 0d |  |
| 27 |  | Generate GERBER from eagle | 1d | 2019-11-26 | 2019-11-26 | 26 | 0d |  |
| 28 |  | Place orders on websites | 1d | 2019-11-27 | 2019-11-27 | 27 | 0d |  |
| 29 |  | Wait for parts | 5d | 2019-11-28 | 2019-12-04 | 28 | 0d | start no earlier than 2019-11-28 |
| 30 |  | Parts/PCB's received | 0d | 2019-12-04 | 2019-12-04 | 29 | 0d |  |
| 31 | 5 | **Design Enclosure** | 7d | 2019-11-06 | 2019-11-14 |  | 20d |  |
| 32 |  | Research premade vs custom | 2d | 2019-11-06 | 2019-11-07 |  | 20d |  |
| 33 |  | Get case | 2d | 2019-11-08 | 2019-11-11 | 32 | 20d |  |
| 34 |  | Case is received | 0d | 2019-11-11 | 2019-11-11 | 33 | 23d |  |
| 35 |  | Drill holes and create labels for pots & inputs | 3d | 2019-11-12 | 2019-11-14 | 33 | 20d |  |
| 36 |  | Enclosure has required holes and looks "cool" | 0d | 2019-11-06 | 2019-11-06 |  | 27d |  |
| 37 | 6 | **Build up boards** | 19d | 2019-11-18 | 2019-12-12 |  | 0d |  |
| 38 |  | Organize parts and highlight placement on layout print out | 1d | 2019-12-05 | 2019-12-05 | 25 | 0d | start no earlier than 2019-12-04 |
| 39 |  | Train on reflow oven | 1d | 2019-11-18 | 2019-11-18 |  | 18d | start no earlier than 2019-11-18 |
| 40 |  | Place SMD and reflow in oven | 3d | 2019-12-06 | 2019-12-10 | 38 | 0d |  |
| 41 |  | Solder through hole components | 2d | 2019-12-11 | 2019-12-12 | 40 | 0d |  |
| 42 |  | Board has all components placed | 0d | 2019-12-12 | 2019-12-12 | 41 | 0d |  |
| 43 |  | Design Board Test | 1d? | 2019-11-06 | 2019-11-06 |  | 26d |  |

## Version 2 (saved 2019-11-06)

Note of the change: Added test and documentation branches. Still needs personnel assignments.

Last finish 2019-12-12 → 2019-12-10 (-2d).

Added:

| ID | Task | Duration | Start | Finish | Predecessors | Constraint |
| --- | --- | --- | --- | --- | --- | --- |
| 5 | Perform Test | 1d | 2019-11-13 11:00 | 2019-11-14 11:00 | 4 |  |
| 6 | Implement Changes on board | 2h | 2019-11-14 11:00 | 2019-11-14 14:00 | 5 |  |
| 7 | Final Testing | 1d? | 2019-11-14 14:00 | 2019-11-15 14:00 | 6 |  |
| 30 | Order Parts | 3h | 2019-11-23 11:00 | 2019-11-23 15:00 | 29 |  |
| 42 | Train on Reflow Oven | 2h | 2019-11-08 08:00 | 2019-11-08 10:00 |  | start no earlier than 2019-11-08 08:00 |
| 48 | Create Test Plan | 2h | 2019-11-23 08:00 | 2019-11-23 10:00 |  | start no earlier than 2019-11-23 08:00 |
| 49 | Describe all test cases: levels, impedances, functionality | 2h | 2019-11-23 08:00 | 2019-11-23 10:00 |  | start no earlier than 2019-11-23 08:00 |
| 50 | Create test case benches | 4h | 2019-12-03 08:00 | 2019-12-03 12:00 | 49 |  |
| 51 | Exhaustively test boards | 5d | 2019-12-03 13:00 | 2019-12-10 12:00 | 50 |  |
| 52 | Review Board Test Results | 1h | 2019-12-09 08:00 | 2019-12-09 09:00 |  | start no earlier than 2019-12-09 08:00 |
| 53 | Implement final board mods, last test | 7h | 2019-12-09 08:00 | 2019-12-09 16:00 |  | start no earlier than 2019-12-09 08:00 |
| 54 | Working system | 0d | 2019-12-03 08:00 | 2019-12-03 08:00 |  |  |
| 55 | Final Documentation | 1d? | 2019-11-06 08:00 | 2019-11-06 17:00 |  |  |

Removed: 39 Train on reflow oven

Changed:

| ID | Task | Start | Finish | Duration | Total float | Predecessors | Other |
| --- | --- | --- | --- | --- | --- | --- | --- |
| 1 | **Prototyping Hardware & Processor** | 2019-11-06 → 2019-11-06 08:00 | 2019-11-15 → 2019-11-15 17:00 | 8d → 8d? |  |  |  |
| 2 | **Finalize Sound Generator** | 2019-11-06 → 2019-11-06 08:00 | 2019-11-14 → 2019-11-15 14:00 (+1d) | 7d → 7.62d? |  |  |  |
| 3 | Move breadboard prototype to protoboard | 2019-11-06 → 2019-11-06 08:00 | 2019-11-12 → 2019-11-12 17:00 |  |  |  |  |
| 4 | Design Test | 2019-11-13 → 2019-11-13 08:00 | 2019-11-14 → 2019-11-13 11:00 (-1d) | 2d → 3h | 1d → 5.88d |  | was named Test functionality |
| 8 | Protoboard functional | 2019-11-14 → 2019-11-15 14:00 (+1d) | 2019-11-14 → 2019-11-15 14:00 (+1d) |  | 1d → 5.88d | 4 → 7 |  |
| 9 | **Finalize filter design** | 2019-11-06 → 2019-11-06 08:00 | 2019-11-11 → 2019-11-11 17:00 |  | 4d → 9.5d |  |  |
| 10 | Select trim resistor values | 2019-11-06 → 2019-11-06 08:00 | 2019-11-07 → 2019-11-07 17:00 |  | 4d → 9.5d |  |  |
| 11 | Test with Sound Generator | 2019-11-08 → 2019-11-08 08:00 | 2019-11-11 → 2019-11-11 17:00 |  | 4d → 9.5d |  |  |
| 12 | Filters and embiggens signal correctly | 2019-11-11 → 2019-11-11 17:00 | 2019-11-11 → 2019-11-11 17:00 |  | 4d → 9.5d |  |  |
| 13 | **Implement Processor CV Generation** | 2019-11-06 → 2019-11-06 08:00 | 2019-11-15 → 2019-11-15 17:00 |  | 0d → 5.5d |  |  |
| 14 | Research ADC reading and PWM output | 2019-11-06 → 2019-11-06 08:00 | 2019-11-07 → 2019-11-07 17:00 |  | 0d → 5.5d |  |  |
| 15 | Write code | 2019-11-08 → 2019-11-08 08:00 | 2019-11-13 → 2019-11-13 17:00 |  | 0d → 5.5d |  |  |
| 16 | Test code and rewrite if necessary | 2019-11-14 → 2019-11-14 08:00 | 2019-11-15 → 2019-11-15 17:00 |  | 0d → 5.5d |  |  |
| 17 | Processor outputs control voltage in desired range | 2019-11-15 → 2019-11-15 17:00 | 2019-11-15 → 2019-11-15 17:00 |  | 0d → 5.5d |  |  |
| 18 | **Finalize Schematic** | 2019-11-18 → 2019-11-18 08:00 | 2019-11-19 → 2019-11-19 17:00 |  | 0d → 5.5d |  |  |
| 19 | Add changes | 2019-11-18 → 2019-11-18 08:00 | 2019-11-18 → 2019-11-18 17:00 |  | 0d → 5.5d |  |  |
| 20 | Pass ERC | 2019-11-18 → 2019-11-18 17:00 | 2019-11-18 → 2019-11-18 17:00 |  | 0d → 5.5d |  |  |
| 21 | Review with team | 2019-11-19 → 2019-11-19 08:00 | 2019-11-19 → 2019-11-19 17:00 |  | 0d → 5.5d |  |  |
| 22 | Team agrees schematic is finalized | 2019-11-19 → 2019-11-19 17:00 | 2019-11-19 → 2019-11-19 17:00 |  | 0d → 5.5d |  |  |
| 23 | **Finalize PCB Layout** | 2019-11-20 → 2019-11-20 08:00 | 2019-11-22 → 2019-11-22 17:00 |  | 0d → 5.5d |  |  |
| 24 | Layout after schematic finalized | 2019-11-20 → 2019-11-20 08:00 | 2019-11-21 → 2019-11-21 17:00 |  | 0d → 5.5d |  |  |
| 25 | Pass DRC | 2019-11-21 → 2019-11-21 17:00 | 2019-11-21 → 2019-11-21 17:00 |  | 0d → 5.5d |  |  |
| 26 | Review with team | 2019-11-22 → 2019-11-22 08:00 | 2019-11-22 → 2019-11-22 17:00 |  | 0d → 5.5d |  |  |
| 27 | Team agrees layout is finalized | 2019-11-22 → 2019-11-22 17:00 | 2019-11-22 → 2019-11-22 17:00 |  | 0d → 5.5d |  |  |
| 28 | **Order & Receive Parts/PCB** | 2019-11-25 → 2019-11-23 08:00 (-2d) | 2019-12-04 → 2019-11-29 14:00 (-5d) | 8d → 5.62d | 0d → 5.12d |  |  |
| 29 | Create BOM from EAGLE | 2019-11-25 → 2019-11-23 08:00 (-2d) | 2019-11-25 → 2019-11-23 11:00 (-2d) | 1d → 3h | 0d → 9.75d |  |  |
| 31 | Generate GERBER from eagle | 2019-11-26 → 2019-11-23 15:00 (-3d) | 2019-11-26 → 2019-11-23 16:00 (-3d) | 1d → 1h | 0d → 9.75d | 29 → 30 |  |
| 32 | Place PCB order | 2019-11-27 → 2019-11-23 16:00 (-4d) | 2019-11-27 → 2019-11-23 17:00 (-4d) | 1d → 1h | 0d → 9.75d |  | was named Place orders on websites |
| 33 | Wait for parts | 2019-11-28 → 2019-11-23 11:00 (-5d) | 2019-12-04 → 2019-11-29 14:00 (-5d) |  | 0d → 5.12d | 32 → none | constraint start no earlier than 2019-11-28 → start no earlier than 2019-11-23 08:00 |
| 34 | Parts/PCB's received | 2019-12-04 → 2019-11-29 08:00 (-5d) | 2019-12-04 → 2019-11-29 08:00 (-5d) |  | 0d → 5.75d | 33 → none | constraint none → start no earlier than 2019-11-29 08:00 |
| 35 | **Design Enclosure** | 2019-11-06 → 2019-11-06 08:00 | 2019-11-14 → 2019-11-14 17:00 |  | 20d → 19.5d |  |  |
| 36 | Research premade vs custom | 2019-11-06 → 2019-11-06 08:00 | 2019-11-07 → 2019-11-07 17:00 |  | 20d → 19.5d |  |  |
| 37 | Get case | 2019-11-08 → 2019-11-08 08:00 | 2019-11-11 → 2019-11-11 17:00 |  | 20d → 19.5d |  |  |
| 38 | Case is received | 2019-11-11 → 2019-11-11 17:00 | 2019-11-11 → 2019-11-11 17:00 |  | 23d → 22.5d |  |  |
| 39 | Drill holes and create labels for pots & inputs | 2019-11-12 → 2019-11-12 08:00 | 2019-11-14 → 2019-11-14 17:00 |  | 20d → 19.5d |  |  |
| 40 | Enclosure has required holes and looks "cool" | 2019-11-06 → 2019-11-06 08:00 | 2019-11-06 → 2019-11-06 08:00 |  | 27d → 26.5d |  |  |
| 41 | **Build up boards** | 2019-11-18 → 2019-11-08 08:00 (-10d) | 2019-12-12 → 2019-12-03 15:00 (-9d) | 19d → 19.75d | 0d → 4.75d |  |  |
| 43 | Organize parts and highlight placement on layout print out | 2019-12-05 → 2019-11-30 08:00 (-5d) | 2019-12-05 → 2019-11-30 12:00 (-5d) | 1d → 4h | 0d → 4.75d |  | constraint start no earlier than 2019-12-04 → start no earlier than 2019-11-30 08:00 |
| 44 | Place SMD and reflow in oven | 2019-12-06 → 2019-11-30 13:00 (-6d) | 2019-12-10 → 2019-12-03 12:00 (-7d) | 3d → 2d | 0d → 4.75d |  |  |
| 45 | Solder through hole components | 2019-12-11 → 2019-12-03 13:00 (-8d) | 2019-12-12 → 2019-12-03 15:00 (-9d) | 2d → 2h | 0d → 4.75d |  |  |
| 46 | Board has all components placed | 2019-12-12 → 2019-12-03 15:00 (-9d) | 2019-12-12 → 2019-12-03 15:00 (-9d) |  | 0d → 4.75d |  |  |
| 47 | **Test boards** | 2019-11-06 → 2019-12-03 08:00 (+27d) | 2019-11-06 → 2019-12-03 17:00 (+27d) |  | 26d → none |  | was named Design Board Test |

## Version 3 (saved 2019-11-06)

Note of the change: Merge remote-tracking branch 'origin/master'

Last finish stays 2019-12-10.

Changed:

| ID | Task | Start | Finish | Duration | Total float | Other |
| --- | --- | --- | --- | --- | --- | --- |
| 5 | Perform Test |  |  |  |  | resources none → Jeff |
| 6 | Implement Changes on board |  |  |  |  | resources none → Jeff |
| 7 | Final Testing |  |  |  |  | resources none → Jeff |
| 30 | Order Parts |  |  |  |  | resources none → Kai |
| 48 | Create Test Plan |  |  |  |  | resources none → Jeff |
| 49 | Describe all test cases: levels, impedances, functionality |  |  |  |  | resources none → Jeff |
| 50 | Create test case benches |  |  |  |  | resources none → Jeff |
| 51 | Exhaustively test boards |  |  |  |  | resources none → Jeff |
| 52 | Review Board Test Results |  |  |  |  | resources none → Jeff |
| 53 | Implement final board mods, last test |  |  |  |  | resources none → Jeff |
| 55 | Write Up Final Documentation | 2019-11-06 08:00 → 2019-12-04 08:00 (+28d) | 2019-11-06 17:00 → 2019-12-06 17:00 (+30d) | 1d? → 3d | 25.5d → 1.5d | was named Final Documentation; constraint none → start no earlier than 2019-12-04 08:00; resources none → Kai |

## Version 4 (saved 2019-11-07)

Note of the change: Updated version of project

Last finish 2019-12-10 → 2019-12-09 (-1d).

Added:

| ID | Task | Duration | Start | Finish | Predecessors | Resources |
| --- | --- | --- | --- | --- | --- | --- |
| 56 | Write initial documentation (user manual, electrical specs) | 2d | 2019-11-23 08:00 | 2019-11-25 17:00 | 27 | Andrew |
| 57 | Document review with team | 4h | 2019-11-26 08:00 | 2019-11-26 12:00 | 56 | Andrew |
| 58 | Write revised document | 1d | 2019-11-26 13:00 | 2019-11-27 12:00 | 57 | Andrew |
| 59 | Final Document review | 4h | 2019-11-27 13:00 | 2019-11-27 17:00 | 58 | Andrew |
| 60 | Implement any final revisions | 1d | 2019-11-28 08:00 | 2019-11-28 17:00 | 59 | Andrew |
| 61 | Team agrees documentation is finalized | 0d | 2019-11-28 17:00 | 2019-11-28 17:00 | 60 | Andrew |

Changed:

| ID | Task | Start | Finish | Duration | Total float | Predecessors | Other |
| --- | --- | --- | --- | --- | --- | --- | --- |
| 1 | **Prototyping Hardware & Processor** |  |  | 8d? → 8d |  |  |  |
| 2 | **Finalize Sound Generator** |  |  | 7.62d? → 7.62d |  |  |  |
| 7 | Final Testing |  |  | 1d? → 1d | 5.88d → 6.25d |  |  |
| 35 | **Design Enclosure** |  | 2019-11-14 17:00 → 2019-11-13 17:00 (-1d) | 7d → 6d | 19.5d → 19.88d |  |  |
| 39 | Drill holes and create labels for pots & inputs |  | 2019-11-14 17:00 → 2019-11-13 17:00 (-1d) | 3d → 2d | 19.5d → 19.88d |  |  |
| 40 | Enclosure has required holes and looks "cool" | 2019-11-06 08:00 → 2019-11-13 17:00 (+7d) | 2019-11-06 08:00 → 2019-11-13 17:00 (+7d) |  | 26.5d → 19.88d | none → 39 |  |
| 41 | **Build up boards** |  | 2019-12-03 15:00 → 2019-12-02 15:00 (-1d) | 19.75d → 18.75d | 4.75d → 5.12d |  |  |
| 44 | Place SMD and reflow in oven |  | 2019-12-03 12:00 → 2019-12-02 12:00 (-1d) | 2d → 1d | 4.75d → 5.12d |  |  |
| 45 | Solder through hole components | 2019-12-03 13:00 → 2019-12-02 13:00 (-1d) | 2019-12-03 15:00 → 2019-12-02 15:00 (-1d) |  | 4.75d → 5.12d |  |  |
| 46 | Board has all components placed | 2019-12-03 15:00 → 2019-12-02 15:00 (-1d) | 2019-12-03 15:00 → 2019-12-02 15:00 (-1d) |  | 4.75d → 5.12d |  |  |
| 47 | **Test boards** | 2019-12-03 08:00 → 2019-11-06 08:00 (-27d) | 2019-12-03 17:00 → 2019-12-09 16:00 (+6d) | 1d? → 25.88d | none → 0d |  |  |
| 50 | Create test case benches | 2019-12-03 08:00 → 2019-11-23 10:00 (-10d) | 2019-12-03 12:00 → 2019-11-23 15:00 (-10d) |  | 0d → 7d |  |  |
| 51 | Exhaustively test boards | 2019-12-03 13:00 → 2019-11-23 15:00 (-10d) | 2019-12-10 12:00 → 2019-11-29 15:00 (-11d) |  | 0d → 7d |  |  |
| 52 | Review Board Test Results |  |  |  | 1.38d → 0.75d | none → 51 |  |
| 54 | Working system | 2019-12-03 08:00 → 2019-11-06 08:00 (-27d) | 2019-12-03 08:00 → 2019-11-06 08:00 (-27d) |  | 5.5d → 25.88d |  |  |
| 55 | **Write Up Documentation** | 2019-12-04 08:00 → 2019-11-23 08:00 (-11d) | 2019-12-06 17:00 → 2019-11-28 17:00 (-8d) | 3d → 5d | 1.5d → 7.88d |  | was named Write Up Final Documentation; constraint start no earlier than 2019-12-04 08:00 → none; resources Kai → none |

## Version 5 (saved 2019-11-07)

Note of the change: More project

Last finish 2019-12-09 → 2019-12-11 (+2d).

Changed:

| ID | Task | Start | Finish | Duration | Total float | Predecessors | Other |
| --- | --- | --- | --- | --- | --- | --- | --- |
| 1 | **Prototyping Hardware & Processor** | 2019-11-06 08:00 → 2019-11-06 | 2019-11-15 17:00 → 2019-11-15 |  |  |  |  |
| 2 | **Finalize Sound Generator** | 2019-11-06 08:00 → 2019-11-06 | 2019-11-15 14:00 → 2019-11-15 |  |  |  |  |
| 3 | Move breadboard prototype to protoboard | 2019-11-06 08:00 → 2019-11-06 | 2019-11-12 17:00 → 2019-11-12 |  |  |  |  |
| 4 | Design Test | 2019-11-13 08:00 → 2019-11-13 | 2019-11-13 11:00 → 2019-11-13 |  | 6.25d → 2.12d |  |  |
| 5 | Perform Test | 2019-11-13 11:00 → 2019-11-13 | 2019-11-14 11:00 → 2019-11-14 |  | 6.25d → 2.12d |  |  |
| 6 | Implement Changes on board | 2019-11-14 11:00 → 2019-11-14 | 2019-11-14 14:00 → 2019-11-14 |  | 6.25d → 2.12d |  |  |
| 7 | Final Testing | 2019-11-14 14:00 → 2019-11-14 | 2019-11-15 14:00 → 2019-11-15 |  | 6.25d → 2.12d |  |  |
| 8 | Protoboard functional | 2019-11-15 14:00 → 2019-11-15 | 2019-11-15 14:00 → 2019-11-15 |  |  |  |  |
| 9 | **Finalize filter design** | 2019-11-06 08:00 → 2019-11-06 | 2019-11-11 17:00 → 2019-11-11 |  | 9.88d → 5.75d |  |  |
| 10 | Select trim resistor values | 2019-11-06 08:00 → 2019-11-06 | 2019-11-07 17:00 → 2019-11-07 |  | 9.88d → 5.75d |  |  |
| 11 | Test with Sound Generator | 2019-11-08 08:00 → 2019-11-08 | 2019-11-11 17:00 → 2019-11-11 |  | 9.88d → 5.75d |  |  |
| 12 | Filters and embiggens signal correctly | 2019-11-11 17:00 → 2019-11-11 | 2019-11-11 17:00 → 2019-11-11 |  |  |  |  |
| 13 | **Implement Processor CV Generation** | 2019-11-06 08:00 → 2019-11-06 | 2019-11-15 17:00 → 2019-11-15 |  | 5.88d → 1.75d |  |  |
| 14 | Research ADC reading and PWM output | 2019-11-06 08:00 → 2019-11-06 | 2019-11-07 17:00 → 2019-11-07 |  |  |  |  |
| 15 | Write code | 2019-11-08 08:00 → 2019-11-08 | 2019-11-13 17:00 → 2019-11-13 |  |  |  |  |
| 16 | Test code and rewrite if necessary | 2019-11-14 08:00 → 2019-11-14 | 2019-11-15 17:00 → 2019-11-15 |  |  |  |  |
| 17 | Processor outputs control voltage in desired range | 2019-11-15 17:00 → 2019-11-15 | 2019-11-15 17:00 → 2019-11-15 |  |  |  |  |
| 18 | **Finalize Schematic** | 2019-11-18 08:00 → 2019-11-18 | 2019-11-19 17:00 → 2019-11-19 |  | 5.88d → 1.75d |  |  |
| 19 | Add changes | 2019-11-18 08:00 → 2019-11-18 | 2019-11-18 17:00 → 2019-11-18 |  | 5.88d → 1.75d |  |  |
| 20 | Pass ERC | 2019-11-18 17:00 → 2019-11-18 | 2019-11-18 17:00 → 2019-11-18 |  |  |  |  |
| 21 | Review with team | 2019-11-19 08:00 → 2019-11-19 | 2019-11-19 17:00 → 2019-11-19 |  | 5.88d → 1.75d |  | resources Andrew → Kai |
| 22 | Team agrees schematic is finalized | 2019-11-19 17:00 → 2019-11-19 | 2019-11-19 17:00 → 2019-11-19 |  |  |  |  |
| 23 | **Finalize PCB Layout** | 2019-11-20 08:00 → 2019-11-20 | 2019-11-22 17:00 → 2019-11-22 |  | 5.88d → 1.75d |  |  |
| 24 | Layout after schematic finalized | 2019-11-20 08:00 → 2019-11-20 | 2019-11-21 17:00 → 2019-11-21 |  | 5.88d → 1.75d |  |  |
| 25 | Pass DRC | 2019-11-21 17:00 → 2019-11-21 | 2019-11-21 17:00 → 2019-11-21 |  |  |  |  |
| 26 | Review with team | 2019-11-22 08:00 → 2019-11-22 | 2019-11-22 17:00 → 2019-11-22 |  | 5.88d → 1.75d |  |  |
| 27 | Team agrees layout is finalized | 2019-11-22 17:00 → 2019-11-22 | 2019-11-22 17:00 → 2019-11-22 |  |  |  |  |
| 28 | **Order & Receive Parts/PCB** | 2019-11-23 08:00 → 2019-11-23 | 2019-11-29 14:00 → 2019-11-29 | 5.62d → 6d | 5.5d → 0.75d |  |  |
| 29 | Create BOM from EAGLE | 2019-11-23 08:00 → 2019-11-23 | 2019-11-23 11:00 → 2019-11-23 |  | 10.12d → 5.75d |  |  |
| 30 | Order Parts | 2019-11-23 11:00 → 2019-11-23 | 2019-11-23 15:00 → 2019-11-23 |  | 9.75d → 5.75d |  |  |
| 31 | Generate GERBER from eagle | 2019-11-23 15:00 → 2019-11-23 | 2019-11-23 16:00 → 2019-11-23 |  | 9.75d → 5.75d |  |  |
| 32 | Place PCB order | 2019-11-23 16:00 → 2019-11-23 | 2019-11-23 17:00 → 2019-11-23 |  | 9.75d → 5.75d |  | constraint none → start no earlier than 2019-11-23; resources Kai → Bader |
| 33 | Wait for parts | 2019-11-23 11:00 → 2019-11-25 (+2d) | 2019-11-29 14:00 → 2019-11-29 |  | 5.12d → 0.75d |  | constraint start no earlier than 2019-11-23 08:00 → start no earlier than 2019-11-25 |
| 34 | Parts/PCB's received | 2019-11-29 08:00 → 2019-11-29 | 2019-11-29 08:00 → 2019-11-29 |  |  |  | constraint start no earlier than 2019-11-29 08:00 → start no earlier than 2019-11-29 |
| 35 | **Design Enclosure** | 2019-11-06 08:00 → 2019-11-06 | 2019-11-13 17:00 → 2019-11-13 |  | 19.88d → 22d |  |  |
| 36 | Research premade vs custom | 2019-11-06 08:00 → 2019-11-06 | 2019-11-07 17:00 → 2019-11-07 |  | 19.5d → 22d |  |  |
| 37 | Get case | 2019-11-08 08:00 → 2019-11-08 | 2019-11-11 17:00 → 2019-11-11 |  | 19.5d → 22d |  |  |
| 38 | Case is received | 2019-11-11 17:00 → 2019-11-11 | 2019-11-11 17:00 → 2019-11-11 |  | 22.5d → 24d |  |  |
| 39 | Drill holes and create labels for pots & inputs | 2019-11-12 08:00 → 2019-11-12 | 2019-11-13 17:00 → 2019-11-13 |  | 19.88d → 22d |  |  |
| 40 | Enclosure has required holes and looks "cool" | 2019-11-13 17:00 → 2019-11-13 | 2019-11-13 17:00 → 2019-11-13 |  |  |  |  |
| 41 | **Build up boards** | 2019-11-08 08:00 → 2019-11-08 | 2019-12-02 15:00 → 2019-12-03 (+1d) | 18.75d → 19.5d | 5.12d → 6.5d |  |  |
| 42 | Train on Reflow Oven | 2019-11-08 08:00 → 2019-11-08 | 2019-11-08 10:00 → 2019-11-08 |  |  |  | constraint start no earlier than 2019-11-08 08:00 → start no earlier than 2019-11-08 |
| 43 | Organize parts and highlight placement on layout print out | 2019-11-30 08:00 → 2019-11-30 | 2019-11-30 12:00 → 2019-12-02 (+2d) |  | 5.12d → 0d |  | constraint start no earlier than 2019-11-30 08:00 → start no earlier than 2019-11-30 |
| 44 | Place SMD and reflow in oven | 2019-11-30 13:00 → 2019-12-02 (+2d) | 2019-12-02 12:00 → 2019-12-03 (+1d) |  | 5.12d → 0d |  | constraint none → start no earlier than 2019-12-02; resources Jeff → Bader |
| 45 | Solder through hole components | 2019-12-02 13:00 → 2019-12-03 (+1d) | 2019-12-02 15:00 → 2019-12-03 (+1d) |  | 5.12d → 0d |  | constraint none → start no earlier than 2019-12-03; resources Jeff → Kai |
| 46 | Board has all components placed | 2019-12-02 15:00 → 2019-12-03 (+1d) | 2019-12-02 15:00 → 2019-12-03 (+1d) |  | 5.12d → 0d |  |  |
| 47 | **Test boards** | 2019-11-06 08:00 → 2019-11-06 | 2019-12-09 16:00 → 2019-12-11 (+2d) | 25.88d → 28d |  |  |  |
| 48 | Create Test Plan | 2019-11-23 08:00 → 2019-11-22 (-1d) | 2019-11-23 10:00 → 2019-11-22 (-1d) |  | 13.25d → 15.75d |  | constraint start no earlier than 2019-11-23 08:00 → start no earlier than 2019-11-22 |
| 49 | Describe all test cases: levels, impedances, functionality | 2019-11-23 08:00 → 2019-11-23 | 2019-11-23 10:00 → 2019-11-23 |  | 7.75d → 8.25d |  | constraint start no earlier than 2019-11-23 08:00 → start no earlier than 2019-11-23 |
| 50 | Create test case benches | 2019-11-23 10:00 → 2019-12-03 (+10d) | 2019-11-23 15:00 → 2019-12-03 (+10d) |  | 7d → 0d | 49 → 49, 46 | resources Jeff → Kai |
| 51 | Exhaustively test boards | 2019-11-23 15:00 → 2019-12-04 (+11d) | 2019-11-29 15:00 → 2019-12-10 (+11d) |  | 7d → 0d |  |  |
| 52 | Review Board Test Results | 2019-12-09 08:00 → 2019-12-11 (+2d) | 2019-12-09 09:00 → 2019-12-11 (+2d) |  | 0.75d → 0d |  | constraint start no earlier than 2019-12-09 08:00 → none; resources Jeff → Andrew |
| 53 | Implement final board mods, last test | 2019-12-09 08:00 → 2019-12-11 (+2d) | 2019-12-09 16:00 → 2019-12-11 (+2d) |  |  | none → 52 | constraint start no earlier than 2019-12-09 08:00 → none; resources Jeff → Andrew |
| 54 | System works as required | 2019-11-06 08:00 → 2019-11-06 | 2019-11-06 08:00 → 2019-11-06 |  | 25.88d → 28d |  | was named Working system |
| 55 | **Write Up Documentation** | 2019-11-23 08:00 → 2019-11-23 | 2019-11-28 17:00 → 2019-11-28 |  | 7.88d → 10d |  |  |
| 56 | Write initial documentation (user manual, electrical specs) | 2019-11-23 08:00 → 2019-11-23 | 2019-11-25 17:00 → 2019-11-25 |  | 7.88d → 10d |  |  |
| 57 | Document review with team | 2019-11-26 08:00 → 2019-11-26 | 2019-11-26 12:00 → 2019-11-26 |  | 7.88d → 10d |  |  |
| 58 | Write revised document | 2019-11-26 13:00 → 2019-11-26 | 2019-11-27 12:00 → 2019-11-27 |  | 7.88d → 10d |  |  |
| 59 | Final Document review | 2019-11-27 13:00 → 2019-11-27 | 2019-11-27 17:00 → 2019-11-27 |  | 7.88d → 10d |  |  |
| 60 | Implement any final revisions | 2019-11-28 08:00 → 2019-11-28 | 2019-11-28 17:00 → 2019-11-28 |  | 7.88d → 10d |  |  |
| 61 | Team agrees documentation is finalized | 2019-11-28 17:00 → 2019-11-28 | 2019-11-28 17:00 → 2019-11-28 |  | 7.88d → 10d |  |  |

## Version 6 (saved 2019-11-07)

Note of the change: Project garbage

Last finish stays 2019-12-11.

Added:

| ID | Task | Duration | Start | Finish | Predecessors | Resources |
| --- | --- | --- | --- | --- | --- | --- |
| 49 | Review test plan | 1d | 2019-11-22 | 2019-11-23 | 48 | Jeff |
| 51 | Review test cases | 1d | 2019-11-23 | 2019-11-25 | 50 | Jeff |

Changed:

| ID | Task | Total float | Predecessors | Other |
| --- | --- | --- | --- | --- |
| 50 | Describe all test cases: levels, impedances, functionality | 8.25d → 7.25d |  | resources Jeff → Bader |
| 52 | Create test case benches |  | 50, 46 → 46, 51 |  |

## Version 7 (saved 2019-11-13)

Note of the change: Added existing project sections from Asana

Last finish stays 2019-12-11.

Added:

| ID | Task | Duration | Start | Finish | Constraint | Resources |
| --- | --- | --- | --- | --- | --- | --- |
| 64 | Develop initial idea | 7d | 2019-10-17 | 2019-10-25 | start no earlier than 2019-10-17 | Andrew; Bader; Jeff; Kai |
| 65 | Compile Wiki | 3d | 2019-10-17 | 2019-10-21 | start no earlier than 2019-10-17 | Kai |

Changed:

| ID | Task | Start | Duration |
| --- | --- | --- | --- |
| 57 | **Write Up Documentation** | 2019-11-23 → 2019-10-17 (-37d) | 5d → 32d |
